# MSRI_Haystack_task_oriented_V3

Schedule from MS Project, 2019-10-01 to 2023-09-30.
Massachusetts Institute of Technology

## Calendars

- Standard: Mon-Fri 08:00-12:00, 13:00-17:00; Sat-Sun off.

## Schedule

| ID | WBS | Task | Type | Duration | Start | Finish | Predecessors | Total slack | Free slack |
| --- | --- | --- | --- | --- | --- | --- | --- | --- | --- |
| 1 | 1 | **Programmatic** |  | 1044d | 2019-10-01 | 2023-09-30 |  | 0d |  |
| 2 | 1.1 | Project Kickoff | milestone, manual | 0d | 2019-10-01 | 2019-10-01 |  |  |  |
| 3 | 1.2 | Project End | milestone, manual | 0d | 2023-09-30 | 2023-09-30 |  |  |  |
| 4 | 1.3 | **Reviews** |  | 828d | 2020-07-01 | 2023-09-01 |  | 0d |  |
| 5 | 1.3.1 | Design Review | milestone, manual | 0d | 2020-07-01 | 2020-07-01 |  |  |  |
| 6 | 1.3.2 | Test Readiness Review | milestone, manual | 0d | 2023-05-15 | 2023-05-15 |  |  |  |
| 7 | 1.3.3 | Delivery Review | milestone, manual | 0d | 2023-09-01 | 2023-09-01 |  |  |  |
| 8 | 2 | **Initial Planning** |  | 180d | 2019-10-01 | 2020-06-08 |  | 864d |  |
| 9 | 2.1 | Design language choices |  | 9mo | 2019-10-01 | 2020-06-08 | 2 | 864d |  |
| 10 | 2.2 | Design build system |  | 180d | 2019-10-01 | 2020-06-08 | 2 | 864d |  |
| 11 | 2.3 | Design parallel support |  | 180d | 2019-10-01 | 2020-06-08 | 2 | 864d |  |
| 12 | 2.4 | Design interactivity |  | 180d | 2019-10-01 | 2020-06-08 | 2 | 864d |  |
| 13 | 2.5 | Design external packages |  | 180d | 2019-10-01 | 2020-06-08 | 2 | 864d |  |
| 14 | 2.6 | Specify new objects creation |  | 180d | 2019-10-01 | 2020-06-08 | 2 | 864d |  |
| 15 | 2.7 | Specify new library creation |  | 180d | 2019-10-01 | 2020-06-08 | 2 | 864d |  |
| 16 | 2.8 | Specify new program creation |  | 180d | 2019-10-01 | 2020-06-08 | 2 | 864d |  |
| 17 | 3 | **Development Phase** |  | 695d | 2020-07-01 | 2023-02-28 |  | 153d |  |
| 18 | 3.1 | **Correlator input & file exchange** |  | 60d | 2020-07-01 | 2020-09-22 |  | 153d |  |
| 19 | 3.1.1 | Design difx import |  | 5d | 2020-07-01 | 2020-07-07 | 5 | 153d | 0d |
| 20 | 3.1.2 | Design file exchange |  | 5d | 2020-07-08 | 2020-07-14 | 19 | 153d | 0d |
| 21 | 3.1.3 | Implement difx import |  | 20d | 2020-07-15 | 2020-08-11 | 20 | 153d | 0d |
| 22 | 3.1.4 | Implement file exchange |  | 20d | 2020-08-12 | 2020-09-08 | 21 | 153d | 0d |
| 23 | 3.1.5 | Test difx import |  | 5d | 2020-09-09 | 2020-09-15 | 22 | 153d | 0d |
| 24 | 3.1.6 | Test file exchange |  | 5d | 2020-09-16 | 2020-09-22 | 23 | 153d | 0d |

| ID | WBS | Task | Duration | Start | Finish | Predecessors | Total slack | Free slack |
| --- | --- | --- | --- | --- | --- | --- | --- | --- |
| 25 | 3.2 | **Outputs to analysis** | 45d | 2020-09-23 | 2020-11-24 |  | 153d |  |
| 26 | 3.2.1 | Design uvfits | 5d | 2020-09-23 | 2020-09-29 | 24 | 153d | 0d |
| 27 | 3.2.2 | Design calcsolve | 5d | 2020-09-30 | 2020-10-06 | 26 | 153d | 0d |
| 28 | 3.2.3 | Implement uvfits | 20d | 2020-10-07 | 2020-11-03 | 27 | 153d | 0d |
| 29 | 3.2.4 | Implement calcsolve | 5d | 2020-11-04 | 2020-11-10 | 28 | 153d | 0d |
| 30 | 3.2.5 | Test uvfits | 5d | 2020-11-11 | 2020-11-17 | 29 | 153d | 0d |
| 31 | 3.2.6 | Test calcsolve | 5d | 2020-11-18 | 2020-11-24 | 30 | 153d | 0d |
| 32 | 3.3 | **Objects** | 110d | 2020-11-25 | 2021-04-27 |  | 153d |  |
| 33 | 3.3.1 | Design mk4 types | 5d | 2020-11-25 | 2020-12-01 | 31 | 153d | 0d |
| 34 | 3.3.2 | Design python wrappers | 5d | 2020-12-02 | 2020-12-08 | 33 | 153d | 0d |
| 35 | 3.3.3 | Design alist | 5d | 2020-12-09 | 2020-12-15 | 34 | 153d | 0d |
| 36 | 3.3.4 | Design control file | 5d | 2020-12-16 | 2020-12-22 | 35 | 153d | 0d |
| 37 | 3.3.5 | Design update vex2xml | 5d | 2020-12-23 | 2020-12-29 | 36 | 153d | 0d |
| 38 | 3.3.6 | Implement mk4 types | 20d | 2020-12-30 | 2021-01-26 | 37 | 153d | 0d |
| 39 | 3.3.7 | Implement python wrappers | 10d | 2021-01-27 | 2021-02-09 | 38 | 153d | 0d |
| 40 | 3.3.8 | Implement alist | 10d | 2021-02-10 | 2021-02-23 | 39 | 153d | 0d |
| 41 | 3.3.9 | Implement control file | 10d | 2021-02-24 | 2021-03-09 | 40 | 153d | 0d |
| 42 | 3.3.10 | Implement update vex2xml | 10d | 2021-03-10 | 2021-03-23 | 41 | 153d | 0d |
| 43 | 3.3.11 | Test mk4 types | 5d | 2021-03-24 | 2021-03-30 | 42 | 153d | 0d |
| 44 | 3.3.12 | Test python wrappers | 5d | 2021-03-31 | 2021-04-06 | 43 | 153d | 0d |
| 45 | 3.3.13 | Test alist | 5d | 2021-04-07 | 2021-04-13 | 44 | 153d | 0d |
| 46 | 3.3.14 | Test control file | 5d | 2021-04-14 | 2021-04-20 | 45 | 153d | 0d |
| 47 | 3.3.15 | Test update vex2xml | 5d | 2021-04-21 | 2021-04-27 | 46 | 153d | 0d |
| 48 | 3.4 | **Algorithms** | 160d | 2021-04-28 | 2021-12-07 |  | 153d |  |
| 49 | 3.4.1 | Design baseline fringing | 5d | 2021-04-28 | 2021-05-04 | 47 | 153d | 0d |
| 50 | 3.4.2 | Design spectral line fits | 5d | 2021-05-05 | 2021-05-11 | 49 | 153d | 0d |
| 51 | 3.4.3 | Design ionospheric fits | 5d | 2021-05-12 | 2021-05-18 | 50 | 153d | 0d |
| 52 | 3.4.4 | Design coherence fits | 5d | 2021-05-19 | 2021-05-25 | 51 | 153d | 0d |
| 53 | 3.4.5 | Design weak fringe search | 5d | 2021-05-26 | 2021-06-01 | 52 | 153d | 0d |
| 54 | 3.4.6 | Design pulsar fold/search | 5d | 2021-06-02 | 2021-06-08 | 53 | 153d | 0d |
| 55 | 3.4.7 | Design support for space | 5d | 2021-06-09 | 2021-06-15 | 54 | 153d | 0d |
| 56 | 3.4.8 | Design polconversion | 5d | 2021-06-16 | 2021-06-22 | 55 | 153d | 0d |
| 57 | 3.4.9 | Implement baseline fringing | 40d | 2021-06-23 | 2021-08-17 | 56 | 153d | 0d |
| 58 | 3.4.10 | Implement ionospheric fits | 20d | 2021-08-18 | 2021-09-14 | 57 | 153d | 0d |
| 59 | 3.4.11 | Implement coherence fits | 20d | 2021-09-15 | 2021-10-12 | 58 | 153d | 0d |
| 60 | 3.4.12 | Implement weak fringe search | 20d | 2021-10-13 | 2021-11-09 | 59 | 153d | 0d |
| 61 | 3.4.13 | Test baseline fringing | 5d | 2021-11-10 | 2021-11-16 | 60 | 153d | 0d |
| 62 | 3.4.14 | Test ionospheric fits | 5d | 2021-11-17 | 2021-11-23 | 61 | 153d | 0d |
| 63 | 3.4.15 | Test coherence fits | 5d | 2021-11-24 | 2021-11-30 | 62 | 153d | 0d |
| 64 | 3.4.16 | Test weak fringe search | 5d | 2021-12-01 | 2021-12-07 | 63 | 153d | 0d |

| ID | WBS | Task | Duration | Start | Finish | Predecessors | Total slack | Free slack |
| --- | --- | --- | --- | --- | --- | --- | --- | --- |
| 65 | 3.5 | **Calibration** | 160d | 2021-12-08 | 2022-07-19 |  | 153d |  |
| 66 | 3.5.1 | Design phase calibration | 5d | 2021-12-08 | 2021-12-14 | 64 | 153d | 0d |
| 67 | 3.5.2 | Design man phase cals | 5d | 2021-12-15 | 2021-12-21 | 66 | 153d | 0d |
| 68 | 3.5.3 | Design pulse phase cals | 5d | 2021-12-22 | 2021-12-28 | 67 | 153d | 0d |
| 69 | 3.5.4 | Design bandpass cals | 5d | 2021-12-29 | 2022-01-04 | 68 | 153d | 0d |
| 70 | 3.5.5 | Design atmospheric cals | 5d | 2022-01-05 | 2022-01-11 | 69 | 153d | 0d |
| 71 | 3.5.6 | Design polarization cals | 5d | 2022-01-12 | 2022-01-18 | 70 | 153d | 0d |
| 72 | 3.5.7 | Design ionospheric cals | 5d | 2022-01-19 | 2022-01-25 | 71 | 153d | 0d |
| 73 | 3.5.8 | Design source structure | 5d | 2022-01-26 | 2022-02-01 | 72 | 153d | 0d |
| 74 | 3.5.9 | Implement man phase cals | 20d | 2022-02-02 | 2022-03-01 | 73 | 153d | 0d |
| 75 | 3.5.10 | Implement pulse phase cals | 40d | 2022-03-02 | 2022-04-26 | 74 | 153d | 0d |
| 76 | 3.5.11 | Implement bandpass cals | 20d | 2022-04-27 | 2022-05-24 | 75 | 153d | 0d |
| 77 | 3.5.12 | Implement atmospheric cals | 20d | 2022-05-25 | 2022-06-21 | 76 | 153d | 0d |
| 78 | 3.5.13 | Test man phase cals | 5d | 2022-06-22 | 2022-06-28 | 77 | 153d | 0d |
| 79 | 3.5.14 | Test pulse phase cals | 5d | 2022-06-29 | 2022-07-05 | 78 | 153d | 0d |
| 80 | 3.5.15 | Test bandpass cals | 5d | 2022-07-06 | 2022-07-12 | 79 | 153d | 0d |
| 81 | 3.5.16 | Test atmospheric cals | 5d | 2022-07-13 | 2022-07-19 | 80 | 153d | 0d |
| 82 | 3.6 | **Processing Support** | 65d | 2022-07-20 | 2022-10-18 |  | 153d |  |
| 83 | 3.6.1 | Design processing messages | 5d | 2022-07-20 | 2022-07-26 | 81 | 153d | 0d |
| 84 | 3.6.2 | Design utility library | 5d | 2022-07-27 | 2022-08-02 | 83 | 153d | 0d |
| 85 | 3.6.3 | Design performance support | 5d | 2022-08-03 | 2022-08-09 | 84 | 153d | 0d |
| 86 | 3.6.4 | Design averaging support | 5d | 2022-08-10 | 2022-08-16 | 85 | 153d | 0d |
| 87 | 3.6.5 | Implement processing messages | 10d | 2022-08-17 | 2022-08-30 | 86 | 153d | 0d |
| 88 | 3.6.6 | Implement utility library | 10d | 2022-08-31 | 2022-09-13 | 87 | 153d | 0d |
| 89 | 3.6.7 | Implement performance support | 10d | 2022-09-14 | 2022-09-27 | 88 | 153d | 0d |
| 90 | 3.6.8 | Test processing messages | 5d | 2022-09-28 | 2022-10-04 | 89 | 153d | 0d |
| 91 | 3.6.9 | Test utility library | 5d | 2022-10-05 | 2022-10-11 | 90 | 153d | 0d |
| 92 | 3.6.10 | Test performance support | 5d | 2022-10-12 | 2022-10-18 | 91 | 153d | 0d |

| ID | WBS | Task | Duration | Start | Finish | Predecessors | Total slack | Free slack |
| --- | --- | --- | --- | --- | --- | --- | --- | --- |
| 93 | 3.7 | **User Interfaces** | 95d | 2022-10-19 | 2023-02-28 |  | 153d |  |
| 94 | 3.7.1 | Design ascii inspection | 5d | 2022-10-19 | 2022-10-25 | 92 | 153d | 0d |
| 95 | 3.7.2 | Design plotting inspection | 5d | 2022-10-26 | 2022-11-01 | 94 | 153d | 0d |
| 96 | 3.7.3 | Design data selection | 5d | 2022-11-02 | 2022-11-08 | 95 | 153d | 0d |
| 97 | 3.7.4 | Design other visualizations | 5d | 2022-11-09 | 2022-11-15 | 96 | 153d | 0d |
| 98 | 3.7.5 | Implement ascii inspection | 10d | 2022-11-16 | 2022-11-29 | 97 | 153d | 0d |
| 99 | 3.7.6 | Implement plotting inspection | 20d | 2022-11-30 | 2022-12-27 | 98 | 153d | 0d |
| 100 | 3.7.7 | Implement data selection | 30d | 2022-12-28 | 2023-02-07 | 99 | 153d | 0d |
| 101 | 3.7.8 | Test ascii inspection | 5d | 2023-02-08 | 2023-02-14 | 100 | 153d | 0d |
| 102 | 3.7.9 | Test plotting inspection | 5d | 2023-02-15 | 2023-02-21 | 101 | 153d | 0d |
| 103 | 3.7.10 | Test data selection | 5d | 2023-02-22 | 2023-02-28 | 102 | 153d |  |
| 104 | 4 | **V&V Phase** | 35d | 2023-05-15 | 2023-06-30 |  | 65d |  |
| 105 | 4.1 | **Correlator input & file exchange** | 10d | 2023-05-15 | 2023-05-26 |  | 65d |  |
| 106 | 4.1.1 | V&V difx2mark4 equiv | 5d | 2023-05-15 | 2023-05-19 | 6 | 65d | 0d |
| 107 | 4.1.2 | V&V difx2fits equiv | 5d | 2023-05-22 | 2023-05-26 | 106 | 65d | 0d |
| 108 | 4.2 | **Outputs to analysis** | 10d | 2023-05-29 | 2023-06-09 |  | 65d |  |
| 109 | 4.2.1 | V&V uvfits | 5d | 2023-05-29 | 2023-06-02 | 107 | 65d | 0d |
| 110 | 4.2.2 | V&V calcsolve | 5d | 2023-06-05 | 2023-06-09 | 109 | 65d | 0d |
| 111 | 4.3 | **Objects** | 5d | 2023-06-12 | 2023-06-16 |  | 65d |  |
| 112 | 4.3.1 | V&V old HOPS regression | 5d | 2023-06-12 | 2023-06-16 | 110 | 65d | 0d |
| 113 | 4.4 | **Calibration** | 10d | 2023-06-19 | 2023-06-30 |  | 65d |  |
| 114 | 4.4.1 | V&V pulse phase cals | 5d | 2023-06-19 | 2023-06-23 | 112 | 65d | 0d |
| 115 | 4.4.2 | V&V man phase solving | 5d | 2023-06-26 | 2023-06-30 | 114 | 65d |  |
